# TIẾN ĐỘ THI CÔNG CẦU THÔN KHAI HOANG 2 (Km14+363,65 - ĐƯỜNG ĐỒNG VĂN - MỐC 456, HÀ GIANG)

How a schedule from MS Project XML changed from version to version. A marks actual dates.

## Version 1 (saved 2026-09-25)

Note of the change: feat: initial release of AEC Multi-Agent System open-source platform

| ID | WBS | Task | Duration | Start | Finish | Predecessors |
| --- | --- | --- | --- | --- | --- | --- |
| 1 | 1.0 | **CHUẨN BỊ MẶT BẰNG & CÔNG TRÌNH TẠM** | 19d | 2026-10-01 | 2026-10-19 |  |
| 2 |  | Bàn giao tim mốc, cọc cao độ mốc tọa độ VN2000 | 2d | 2026-10-01 | 2026-10-02 |  |
| 3 |  | Rà phá bom mìn, dọn dẹp mặt bằng thi công & lán trại | 5d | 2026-10-03 | 2026-10-07 | 2 |
| 4 |  | Thi công đường công vụ vượt suối, bãi đúc dầm & bãi tập kết | 12d | 2026-10-08 | 2026-10-19 | 3 |
| 5 | 2.0 | **KẾT CẤU PHẦN DƯỚI (MỐ M1 VÀ MỐ M2)** | 75d | 2026-10-20 | 2027-01-03 |  |
| 6 |  | Đào hố móng bệ mố M1, M2 ngàm vào nền đá gốc (h >= 50cm) | 8d | 2026-10-20 | 2026-10-27 | 4 |
| 7 |  | Khoan lỗ và cắm 98 thanh thép neo D32 L=1.0m vào đá gốc | 5d | 2026-10-28 | 2026-11-01 | 6 |
| 8 |  | Rải đá dăm đệm và đổ bê tông lót đáy bệ móng mố M1, M2 | 2d | 2026-11-02 | 2026-11-03 | 7 |
| 9 |  | Gia công lắp dựng cốt thép bệ móng mố M1, M2 (D16, D22, D25) | 5d | 2026-11-04 | 2026-11-08 | 8 |
| 10 |  | Lắp dựng ván khuôn bệ móng mố M1, M2 | 7d | 2026-11-09 | 2026-11-15 | 9 |
| 11 |  | Đổ bê tông bệ móng mố M1, M2 mác 30 MPa (kết hợp đầm dùi) | 7d | 2026-11-16 | 2026-11-22 | 10 |
| 12 |  | Bảo dưỡng bê tông bệ móng mố (chờ đạt cường độ R7) | 7d | 2026-11-23 | 2026-11-29 | 11 |
| 13 |  | Gia công lắp dựng cốt thép thân mố, tường cánh, tường đỉnh M1, M2 | 5d | 2026-11-30 | 2026-12-04 | 12 |
| 14 |  | Lắp dựng ván khuôn thân mố, tường cánh và xà mũ mố | 9d | 2026-12-05 | 2026-12-13 | 13 |
| 15 |  | Đổ bê tông thân mố, tường cánh, tường đỉnh M1, M2 (30 MPa) | 3d | 2026-12-14 | 2026-12-16 | 14 |
| 16 |  | Đổ bê tông đá kê gối, ụ neo dầm & lắp đặt 8 gối cao su bản thép | 4d | 2026-12-17 | 2026-12-20 | 15 |
| 17 |  | Đắp đất chọn lọc lòng mố (K98) & quét 2 lớp nhựa đường chống thấm mặt mố | 13d | 2026-12-21 | 2027-01-03 | 16 |
| 18 | 3.0 | **KẾT CẤU NHỊP DẦM T 15m (ĐÚC DẦM & LAO LẮP)** | 77d | 2026-11-20 | 2027-02-06 |  |
| 19 |  | Gia công lắp dựng cốt thép 4 phiến dầm T L=15m tại bãi đúc | 33d | 2026-11-20 | 2026-12-22 | 11 |
| 20 |  | Lắp dựng ván khuôn thép định hình dầm T 15m | 12d | 2026-12-23 | 2027-01-03 | 19 |
| 21 |  | Đổ bê tông 4 phiến dầm T 15m (Bê tông C40/C35 mác cao) | 2d | 2027-01-04 | 2027-01-05 | 20 |
| 22 |  | Dưỡng hộ bê tông dầm T đủ 28 ngày đạt cường độ thiết kế | 28d | 2027-01-06 | 2027-02-02 | 21 |
| 23 |  | Vận chuyển và cẩu lắp 4 phiến dầm T vào vị trí mố M1, M2 | 2d | 2027-02-03 | 2027-02-04 | 16, 22 |
| 24 |  | Lắp cốt thép, ván khuôn và đổ bê tông dầm ngang, mối nối ướt dầm T | 2d | 2027-02-05 | 2027-02-06 | 23 |
| 25 | 4.0 | **MẶT CẦU, HOÀN THIỆN & ĐƯỜNG ĐẦU CẦU** | 45d | 2027-02-07 | 2027-03-23 |  |
| 26 |  | Lắp dựng cốt thép bản mặt cầu (lưới thép D6) & ván khuôn treo | 2d | 2027-02-07 | 2027-02-08 | 24 |
| 27 |  | Đổ bê tông bản mặt cầu tại chỗ (Bê tông 30 MPa) | 2d | 2027-02-09 | 2027-02-10 | 26 |
| 28 |  | Dưỡng hộ bê tông bản mặt cầu (chờ đạt cường độ R14) | 14d | 2027-02-11 | 2027-02-24 | 27 |
| 29 |  | Đổ bê tông gờ lan can, lắp dựng lan can thép mạ kẽm & ống thoát nước D150 | 3d | 2027-02-25 | 2027-02-27 | 28 |
| 30 |  | Lắp đặt 02 khe co giãn thép răng lược HP50 & chèn vữa không co ngót 50 MPa | 4d | 2027-02-28 | 2027-03-03 | 28 |
| 31 |  | Phun lớp chống thấm mặt cầu & thảm bê tông nhựa chặt C12.5 dày 7cm | 1d | 2027-03-04 | 2027-03-04 | 30 |
| 32 |  | Thi công 2 bản quá độ BTCT 25 MPa & đắp đất đoạn chuyển tiếp K95 | 2d | 2027-03-05 | 2027-03-06 | 31 |
| 33 |  | Gia cố ốp mái taluy mố bằng BTXM 20 MPa dày 20cm trên đệm đá dăm & tường chắn | 5d | 2027-03-07 | 2027-03-11 | 32 |
| 34 |  | Thi công kết cấu nền mặt đường hai đầu cầu nối tuyến | 8d | 2027-03-12 | 2027-03-19 | 32 |
| 35 |  | Thử tải cầu, kiểm định tĩnh/động & nghiệm thu bàn giao đưa vào khai thác | 4d | 2027-03-20 | 2027-03-23 | 34 |

## Version 2 (saved 2026-09-26)

Note of the change: feat(mcp-cad): tich hop kien truc he thong MCP 3 thanh phan doc hieu ban ve DWG tu dong

Last finish 2027-03-23 → 2027-05-01 (+39d).

Removed: 23 Vận chuyển và cẩu lắp 4 phiến dầm T vào vị trí mố M1, M2; 24 Lắp cốt thép, ván khuôn và đổ bê tông dầm ngang, mối nối ướt dầm T; 25 MẶT CẦU, HOÀN THIỆN & ĐƯỜNG ĐẦU CẦU; 26 Lắp dựng cốt thép bản mặt cầu (lưới thép D6) & ván khuôn treo; 27 Đổ bê tông bản mặt cầu tại chỗ (Bê tông 30 MPa); 28 Dưỡng hộ bê tông bản mặt cầu (chờ đạt cường độ R14); 29 Đổ bê tông gờ lan can, lắp dựng lan can thép mạ kẽm & ống thoát nước D150; 30 Lắp đặt 02 khe co giãn thép răng lược HP50 & chèn vữa không co ngót 50 MPa; 31 Phun lớp chống thấm mặt cầu & thảm bê tông nhựa chặt C12.5 dày 7cm; 32 Thi công 2 bản quá độ BTCT 25 MPa & đắp đất đoạn chuyển tiếp K95; 33 Gia cố ốp mái taluy mố bằng BTXM 20 MPa dày 20cm trên đệm đá dăm & tường chắn; 34 Thi công kết cấu nền mặt đường hai đầu cầu nối tuyến; 35 Thử tải cầu, kiểm định tĩnh/động & nghiệm thu bàn giao đưa vào khai thác

Changed:

| ID | Task | Start | Finish | Duration | Predecessors | Other |
| --- | --- | --- | --- | --- | --- | --- |
| 1 | Bàn giao cọc mốc tim tuyến và định vị công trình |  | 2026-10-19 → 2026-10-05 (-14d) | 19d → 5d |  | was named CHUẨN BỊ MẶT BẰNG & CÔNG TRÌNH TẠM |
| 2 | Thi công đường công vụ, lán trại và dọn dẹp mặt bằng | 2026-10-01 → 2026-10-06 (+5d) | 2026-10-02 → 2026-10-20 (+18d) | 2d → 15d | none → 1 | was named Bàn giao tim mốc, cọc cao độ mốc tọa độ VN2000 |
| 3 | Kiểm định vật liệu đầu vào (Xi măng, cát, đá, thép) | 2026-10-03 → 2026-10-06 (+3d) | 2026-10-07 → 2026-10-15 (+8d) | 5d → 10d |  | was named Rà phá bom mìn, dọn dẹp mặt bằng thi công & lán trại |
| 4 | Thi công bãi đúc dầm T15m và lắp đặt trạm trộn | 2026-10-08 → 2026-10-21 (+13d) | 2026-10-19 → 2026-11-09 (+21d) | 12d → 20d |  | was named Thi công đường công vụ vượt suối, bãi đúc dầm & bãi tập kết |
| 5 | Đào hố móng mố M1 và xử lý nền đá nứt nẻ | 2026-10-20 → 2026-10-21 (+1d) | 2027-01-03 → 2026-11-09 (-55d) | 75d → 20d | none → 4 | was named KẾT CẤU PHẦN DƯỚI (MỐ M1 VÀ MỐ M2) |
| 6 | Khoan cấy cốt thép neo D32 vào nền đá hố móng M1 | 2026-10-20 → 2026-11-10 (+21d) | 2026-10-27 → 2026-11-19 (+23d) | 8d → 10d | 4 → 5 | was named Đào hố móng bệ mố M1, M2 ngàm vào nền đá gốc (h >= 50cm) |
| 7 | Đổ bê tông đệm móng mố M1 C10 (M150) | 2026-10-28 → 2026-11-20 (+23d) | 2026-11-01 → 2026-11-22 (+21d) | 5d → 3d |  | was named Khoan lỗ và cắm 98 thanh thép neo D32 L=1.0m vào đá gốc |
| 8 | Gia công lắp dựng cốt thép và ván khuôn móng mố M1 | 2026-11-02 → 2026-11-23 (+21d) | 2026-11-03 → 2026-12-02 (+29d) | 2d → 10d |  | was named Rải đá dăm đệm và đổ bê tông lót đáy bệ móng mố M1, M2 |
| 9 | Đổ bê tông móng mố M1 C30 (V = 110 m3) | 2026-11-04 → 2026-12-03 (+29d) | 2026-11-08 → 2026-12-06 (+28d) | 5d → 4d |  | was named Gia công lắp dựng cốt thép bệ móng mố M1, M2 (D16, D22, D25) |
| 10 | Đào hố móng và khoan cấy thép neo nền đá mố M2 | 2026-11-09 → 2026-11-10 (+1d) | 2026-11-15 → 2026-11-29 (+14d) | 7d → 20d |  | was named Lắp dựng ván khuôn bệ móng mố M1, M2 |
| 11 | Đổ bê tông đệm và bê tông móng mố M2 C30 | 2026-11-16 → 2026-11-30 (+14d) | 2026-11-22 → 2026-12-11 (+19d) | 7d → 12d |  | was named Đổ bê tông bệ móng mố M1, M2 mác 30 MPa (kết hợp đầm dùi) |
| 12 | Thi công thân mố, tường ngực và tường cánh M1 C30 | 2026-11-23 → 2026-12-07 (+14d) | 2026-11-29 → 2026-12-31 (+32d) | 7d → 25d |  | was named Bảo dưỡng bê tông bệ móng mố (chờ đạt cường độ R7) |
| 13 | Thi công thân mố, tường ngực và tường cánh M2 C30 | 2026-11-30 → 2026-12-12 (+12d) | 2026-12-04 → 2027-01-05 (+32d) | 5d → 25d |  | was named Gia công lắp dựng cốt thép thân mố, tường cánh, tường đỉnh M1, M2 |
| 14 | Đúc 4 phiến dầm chủ T15m C40 tại bãi đúc dầm | 2026-12-05 → 2026-12-15 (+10d) | 2026-12-13 → 2027-01-23 (+41d) | 9d → 40d |  | was named Lắp dựng ván khuôn thân mố, tường cánh và xà mũ mố |
| 15 | Bảo dưỡng dầm T15m và nghiệm thu xuất xưởng | 2026-12-14 → 2027-01-24 (+41d) | 2026-12-16 → 2027-02-06 (+52d) | 3d → 14d |  | was named Đổ bê tông thân mố, tường cánh, tường đỉnh M1, M2 (30 MPa) |
| 16 | Lắp đặt đá kê gối và 8 gối cao su bản thép (350x500x84) | 2026-12-17 → 2027-02-07 (+52d) | 2026-12-20 → 2027-02-12 (+54d) | 4d → 6d |  | was named Đổ bê tông đá kê gối, ụ neo dầm & lắp đặt 8 gối cao su bản thép |
| 17 | Lao lắp 4 phiến dầm T15m vào vị trí mố M1-M2 | 2026-12-21 → 2027-02-13 (+54d) | 2027-01-03 → 2027-02-20 (+48d) | 13d → 8d |  | was named Đắp đất chọn lọc lòng mố (K98) & quét 2 lớp nhựa đường chống thấm mặt mố |
| 18 | Thi công 3 dầm ngang C30 liên kết dầm chủ | 2026-11-20 → 2027-02-21 (+93d) | 2027-02-06 → 2027-03-04 (+26d) | 77d → 12d | none → 17 | was named KẾT CẤU NHỊP DẦM T 15m (ĐÚC DẦM & LAO LẮP) |
| 19 | Lắp đặt ván khuôn, lưới thép D6 và đổ bê tông mặt cầu C35 | 2026-11-20 → 2027-03-05 (+105d) | 2026-12-22 → 2027-03-22 (+90d) | 33d → 18d | 11 → 18 | was named Gia công lắp dựng cốt thép 4 phiến dầm T L=15m tại bãi đúc |
| 20 | Thi công gờ lan can C25 và lắp đặt lan can thép mạ kẽm | 2026-12-23 → 2027-03-23 (+90d) | 2027-01-03 → 2027-04-06 (+93d) | 12d → 15d |  | was named Lắp dựng ván khuôn thép định hình dầm T 15m |
| 21 | Thi công bản quá độ hai đầu cầu và tường chắn đất C25 | 2027-01-04 → 2027-03-23 (+78d) | 2027-01-05 → 2027-04-11 (+96d) | 2d → 20d |  | was named Đổ bê tông 4 phiến dầm T 15m (Bê tông C40/C35 mác cao) |
| 22 | Lắp khe co giãn, thảm BTNC 19, thử tải và bàn giao | 2027-01-06 → 2027-04-12 (+96d) | 2027-02-02 → 2027-05-01 (+88d) | 28d → 20d |  | was named Dưỡng hộ bê tông dầm T đủ 28 ngày đạt cường độ thiết kế |
